# Istanbul New Airport

Schedule from MS Project, 2018-02-19 to 2028-06-28, status date 2023-04-28, costs in $, A marks actual dates.
To build a better, faster and stronger airport with state-of-the-art infrastructures by June 18, 2028 within a budget of $11 billion. / The baseline cost is $9,535,496,400. Management reserve is 10% of baseline cost, which is $ 953,549,640. Therefore, the budget of the project is $ 10,489,046,040.

## Calendars

- Standard: Mon-Fri 08:00-12:00, 13:00-17:00; Sat-Sun off.

## Resources

| Resource | Rate | Notes |
| --- | --- | --- |
| Project team A | 10000 | Project Team A has been established on account of their technical expertise and problem-solving skills. The team consists of experienced members having different backgrounds like IT, computer, civil engineering and business. |
| Project Team B | 15000 | Project Team B is designed based on their association with Istanbul. They have been working in Turkey and particularly in the airport sector for a long time and have a lot of knowledge about the nation's rules and regulations, therefore, they will prove to be an asset for the organization. |
| Simulators | 10000 |  |
| Software |  |  |
| Project Manager | 1300 |  |
| Labourers A | 300000 |  |
| Labourers B | 400000 |  |
| Labourers C | 450000 |  |
| Account Team B | 20000 |  |
| HR B | 20000 |  |
| Staff A | 20000 | Staff A is primarily in-charge of passenger communication like understanding their needs, receiving feedback or any other related topics. / Staff A and B have been trained to be multi-purpose, carrying out each other's actvities as well. |
| Staff B | 20000 | Staff B is primarily in-charge of other activities like oordinating with workers, simulators and other project teams. / Staff A and B have been trained to be multi-purpose, carrying out each other's actvities as well. |
| Pilot | 1000 | Pilot has been appointed to test the runway's capability for take-off and landing. |
| Asphalt | 500000 |  |
| Concrete | 1000000 |  |
| Equipments/Machines |  |  |
| Contingency Reserve |  |  |
| HR A | 25000 |  |

## Schedule

| ID | WBS | Task | Duration | Start | Finish | Predecessors | Complete | Remaining | Baseline start | Baseline finish | Baseline duration | Total slack | Constraint | Resources | Work | Actual work | Cost | Baseline cost | Actual cost |
| --- | --- | --- | --- | --- | --- | --- | --- | --- | --- | --- | --- | --- | --- | --- | --- | --- | --- | --- | --- |
| 1 | 1 | **Istanbul new airport** | 2703d | 2018-02-19 A | 2028-06-28 |  | 62% | 1027.49d | 2018-02-19 | 2028-06-28 | 2703d | 0d |  |  | 47572h | 25428h | 9,501,100,182.13 | 9,535,496,400 | 6,409,934,150.52 |
| 2 | 1.1 | **Documents** | 83d | 2018-02-19 A | 2018-06-13 |  | 99% | 0d | 2018-02-19 | 2018-06-13 | 83d | 0d |  |  | 1344h | 1344h | 14,871,042.16 | 15,003,360 | 14,871,042.16 |
| 3 | 1.1.1 | **Project Proposal** | 19d | 2018-02-19 A | 2018-03-15 A |  | 100% |  | 2018-02-19 | 2018-03-15 | 19d |  |  | Contingency Reserve [0.1%] | 224h | 224h | 1,596,840 | 1,607,240 | 1,596,840 |
| 4 | 1.1.1.1 | Identify project needs/requirements | 10d | 2018-02-19 A | 2018-03-02 A |  | 100% |  | 2018-02-19 | 2018-03-02 | 10d |  |  | Project Manager; Project Team B | 160h | 160h | 1,304,000 | 1,304,000 | 1,304,000 |
| 5 | 1.1.1.2 | Complete the project proposal form | 4d | 2018-03-06 A | 2018-03-09 A | 4 | 100% |  | 2018-03-05 | 2018-03-09 | 5d |  |  | Project Manager | 32h | 32h | 41,600 | 52,000 | 41,600 |
| 6 | 1.1.1.3 | Obtain approval from sponsor | 4d | 2018-03-12 A | 2018-03-15 A | 5 | 100% |  | 2018-03-12 | 2018-03-15 | 4d |  |  | Project Manager | 32h | 32h | 41,600 | 41,600 | 41,600 |
| 7 | 1.1.2 | **Scope Document** | 29d | 2018-03-20 A | 2018-04-27 A |  | 100% |  | 2018-03-20 | 2018-04-27 | 29d |  |  | Contingency Reserve [0.1%] | 384h | 384h | 4,365,160 | 4,455,560 | 4,365,160 |
| 8 | 1.1.2.1 | Identify project objectives | 4d | 2018-03-20 A | 2018-03-23 A | 6FS+2d | 100% |  | 2018-03-20 | 2018-03-26 | 5d |  |  | Project Manager; Project team A | 64h | 64h | 361,600 | 452,000 | 361,600 |
| 9 | 1.1.2.2 | Identify major deliverables/milestones | 6d | 2018-03-27 A | 2018-04-03 A | 8 | 100% |  | 2018-03-27 | 2018-04-03 | 6d |  |  | Project Manager; Project Team B | 96h | 96h | 782,400 | 782,400 | 782,400 |
| 10 | 1.1.2.3 | Establish technical requirements | 8d | 2018-04-04 A | 2018-04-13 A | 9 | 100% |  | 2018-04-04 | 2018-04-13 | 8d |  |  | Project team A | 64h | 64h | 640,000 | 640,000 | 640,000 |
| 11 | 1.1.2.4 | Define limits and exclusions | 10d | 2018-04-16 A | 2018-04-27 A | 10 | 100% |  | 2018-04-16 | 2018-04-27 | 10d |  |  | Project team A; Project Team B | 160h | 160h | 2,000,000 | 2,000,000 | 2,000,000 |
| 12 | 1.1.3 | **Project Charter** | 36d | 2018-04-25 A | 2018-06-13 |  | 99% | 0d | 2018-04-25 | 2018-06-13 | 36d | 0d |  | Contingency Reserve [0.1%] | 736h | 736h | 8,909,042.16 | 8,940,560 | 8,909,042.16 |
| 13 | 1.1.3.1 | Build team | 15d | 2018-04-25 A | 2018-05-15 A | 11FS-3d | 100% |  | 2018-04-25 | 2018-05-15 | 15d |  | finish no earlier than 2018-05-15 | Project Manager; HR B | 240h | 240h | 2,556,000 | 2,556,000 | 2,556,000 |
| 14 | 1.1.3.2 | Identify main stakeholders | 10d | 2018-05-16 A | 2018-05-29 A | 13 | 100% |  | 2018-05-16 | 2018-05-29 | 10d |  | finish no earlier than 2018-05-29 | Project Manager; Project team A | 160h | 160h | 904,000 | 904,000 | 904,000 |
| 15 | 1.1.3.3 | Include project scope,budget and schedule information | 8d | 2018-05-30 A | 2018-06-08 A | 14 | 100% |  | 2018-05-30 | 2018-06-08 | 8d |  | finish no earlier than 2018-06-08 | Account Team B [50%]; Project Manager; Staff A; Staff B; Project team A | 288h | 288h | 3,923,200 | 3,923,200 | 3,923,200 |
| 16 | 1.1.3.4 | Include other relevant information from proposal form and scope document | 3d | 2018-06-11 A | 2018-06-13 A | 15 | 100% |  | 2018-06-11 | 2018-06-13 | 3d |  | finish no earlier than 2018-06-13 | Project Manager; Project Team B | 48h | 48h | 391,200 | 391,200 | 391,200 |
| 17 | 1.2 | **Strategic plan** | 58d | 2018-06-14 A | 2018-09-03 |  | 99% | 0d | 2018-06-14 | 2018-09-03 | 58d | 0d |  |  | 1588h | 1588h | 30,235,847.47 | 30,601,040 | 30,235,847.47 |
| 18 | 1.2.1 | **Project Assessment** | 32d | 2018-06-14 A | 2018-07-27 |  | 99% | 0d | 2018-06-14 | 2018-07-30 | 33d | 0d |  | Contingency Reserve [0.1%] | 868h | 868h | 14,880,127.47 | 15,245,320 | 14,880,127.47 |
| 19 | 1.2.1.1 | Determine organization's expectation | 9d | 2018-06-14 A | 2018-06-26 A | 16 | 100% |  | 2018-06-14 | 2018-06-26 | 9d |  |  | HR B [50%]; Project Manager; Project team A; Project Team B; Staff B | 324h | 324h | 4,053,600 | 4,053,600 | 4,053,600 |
| 20 | 1.2.1.2 | Estimate required resources | 8d | 2018-06-27 A | 2018-07-06 A | 19 | 100% |  | 2018-06-27 | 2018-07-06 | 8d |  |  | Account Team B [50%]; Project Team B [50%]; Project Manager; Project team A | 192h | 192h | 1,843,200 | 1,843,200 | 1,843,200 |
| 21 | 1.2.1.3 | Identify available resources | 10d | 2018-06-25 A | 2018-07-06 A | 20FF | 100% |  | 2018-06-25 | 2018-07-06 | 10d |  |  | Account Team B [50%]; HR B [50%]; Staff A | 240h | 240h | 4,800,000 | 4,800,000 | 4,800,000 |
| 22 | 1.2.1.4 | Hire additional resources if required | 14d | 2018-07-09 A | 2018-07-27 A | 21 | 100% |  | 2018-07-09 | 2018-07-30 | 16d |  | finish no earlier than 2018-07-27 | HR B | 112h | 112h | 2,240,000 | 2,560,000 | 2,240,000 |
| 23 | 1.2.2 | **Opportunity definition** | 25d | 2018-07-31 A | 2018-09-03 A |  | 100% |  | 2018-07-31 | 2018-09-03 | 25d |  |  | Contingency Reserve [0.1%] | 720h | 720h | 15,355,720 | 15,355,720 | 15,355,720 |
| 24 | 1.2.2.1 | Conduct market surveys to identify passengers' requirements | 25d | 2018-07-31 A | 2018-09-03 A | 22 | 100% |  | 2018-07-31 | 2018-09-03 | 25d |  |  | Staff A | 200h | 200h | 4,000,000 | 4,000,000 | 4,000,000 |
| 25 | 1.2.2.2 | Research on competitors' upcoming projects | 15d | 2018-07-31 A | 2018-08-20 A | 24SS | 100% |  | 2018-07-31 | 2018-08-20 | 15d |  |  | HR B; Staff B | 240h | 240h | 4,800,000 | 4,800,000 | 4,800,000 |
| 26 | 1.2.2.3 | Establish goals, boundaries of project | 7d | 2018-08-21 A | 2018-08-29 A | 25 | 100% |  | 2018-08-21 | 2018-08-29 | 7d |  |  | Account Team B [50%]; HR B [50%]; Project Manager; Project Team B; HR A | 280h | 280h | 4,552,800 | 4,552,800 | 4,552,800 |

| ID | WBS | Task | Type | Duration | Start | Finish | Predecessors | Complete | Remaining | Baseline start | Baseline finish | Baseline duration | Total slack | Constraint | Resources | Work | Actual work | Cost | Baseline cost | Actual cost |
| --- | --- | --- | --- | --- | --- | --- | --- | --- | --- | --- | --- | --- | --- | --- | --- | --- | --- | --- | --- | --- |
| 27 | 1.3 | **Certification** |  | 42d | 2018-08-27 A | 2018-10-23 |  | 79% | 8.88d | 2018-08-30 | 2018-10-26 | 42d | 2526d |  |  | 544h | 456h | 9,520,920 | 7,931,320 | 7,713,880 |
| 28 | 1.3.1 | **ENVISION Certificate** |  | 22d | 2018-08-27 A | 2018-09-25 A |  | 100% |  | 2018-08-30 | 2018-09-25 | 19d |  |  | Contingency Reserve [0.1%] | 224h | 224h | 3,603,640 | 3,603,640 | 3,603,640 |
| 29 | 1.3.1.1 | Apply for ENVISION certification |  | 9d | 2018-08-27 A | 2018-09-06 A | 26 | 100% |  | 2018-08-30 | 2018-09-11 | 9d |  |  | Project Manager; Staff B | 144h | 144h | 1,533,600 | 1,533,600 | 1,533,600 |
| 30 | 1.3.1.2 | Obtain ENVISION certificate |  | 10d | 2018-09-12 A | 2018-09-25 A | 29 | 100% |  | 2018-09-12 | 2018-09-25 | 10d |  |  | Staff A | 80h | 80h | 1,600,000 | 1,600,000 | 1,600,000 |
| 31 | 1.3.2 | **LEED Certificate** |  | 34d | 2018-09-06 A | 2018-10-23 |  | 67% | 11.33d | 2018-09-26 | 2018-10-26 | 23d | 2526d |  | Contingency Reserve [0.1%] | 320h | 232h | 5,917,280 | 4,327,680 | 4,110,240 |
| 32 | 1.3.2.1 | Apply for LEED certification |  | 7d | 2018-09-06 A | 2018-09-14 A | 30 | 100% |  | 2018-09-26 | 2018-10-05 | 8d |  |  | Project Manager; Staff B | 112h | 112h | 1,192,800 | 1,363,200 | 1,192,800 |
| 33 | 1.3.2.2 | Utilize energy/electricity in an optimum manner until the certificate is obtained |  | 26d | 2018-09-18 A | 2018-10-23 | 32 | 58% | 11d | 2018-10-08 | 2018-10-26 | 15d | 2526d | finish no earlier than 2018-10-23 | Staff B | 208h | 120h | 4,160,000 | 2,400,000 | 2,400,000 |
| 34 | 1.4 | **Action plan** |  | 47d | 2018-10-29 A | 2019-01-01 A |  | 100% |  | 2018-10-29 | 2019-01-01 | 47d |  |  |  | 720h | 720h | 13,366,000 | 13,846,000 | 13,366,000 |
| 35 | 1.4.1 | **Financial Forecast** |  | 28d | 2018-10-29 A | 2018-12-05 A |  | 100% |  | 2018-10-29 | 2018-12-05 | 28d |  |  | Contingency Reserve [0.1%] | 416h | 416h | 7,248,000 | 7,728,000 | 7,248,000 |
| 36 | 1.4.1.1 | Estimate manpower cost per unit time |  | 5d | 2018-10-29 A | 2018-11-02 A | 33 | 100% |  | 2018-10-29 | 2018-11-02 | 5d |  |  | Project team A; Staff A | 80h | 80h | 1,200,000 | 1,200,000 | 1,200,000 |
| 37 | 1.4.1.2 | Estimate equipment cost per unit time |  | 6d | 2018-11-05 A | 2018-11-12 A | 36 | 100% |  | 2018-11-05 | 2018-11-12 | 6d |  |  | Project team A; Staff A | 96h | 96h | 1,440,000 | 1,440,000 | 1,440,000 |
| 38 | 1.4.1.3 | Estimate working days |  | 6d | 2018-11-13 A | 2018-11-20 A | 37 | 100% |  | 2018-11-13 | 2018-11-22 | 8d |  |  | Project team A; Staff A | 96h | 96h | 1,440,000 | 1,920,000 | 1,440,000 |
| 39 | 1.4.1.4 | Calculate total cost |  | 9d | 2018-11-23 A | 2018-12-05 A | 38 | 100% |  | 2018-11-23 | 2018-12-05 | 9d |  |  | Account Team B; Project team A | 144h | 144h | 2,160,000 | 2,160,000 | 2,160,000 |
| 40 | 1.4.2 | **Construction schedule** |  | 19d | 2018-12-06 A | 2019-01-01 A |  | 100% |  | 2018-12-06 | 2019-01-01 | 19d |  |  | Contingency Reserve [0.1%] | 304h | 304h | 6,118,000 | 6,118,000 | 6,118,000 |
| 41 | 1.4.2.1 | Define number of working hours/day |  | 6d | 2018-12-06 A | 2018-12-13 A | 39 | 100% |  | 2018-12-06 | 2018-12-13 | 6d |  |  | HR B; Project Team B | 96h | 96h | 1,680,000 | 1,680,000 | 1,680,000 |
| 42 | 1.4.2.2 | Define number of working days/week |  | 4d | 2018-12-14 A | 2018-12-19 A | 41 | 100% |  | 2018-12-14 | 2018-12-19 | 4d |  |  | Project Team B; Staff B | 64h | 64h | 1,120,000 | 1,120,000 | 1,120,000 |
| 43 | 1.4.2.3 | Estimate total project duration |  | 9d | 2018-12-20 A | 2019-01-01 A | 42 | 100% |  | 2018-12-20 | 2019-01-01 | 9d |  |  | Account Team B; Project Team B | 144h | 144h | 2,520,000 | 2,520,000 | 2,520,000 |
| 44 | 1.4.2.4 | Action Plan Ready | milestone | 0d | 2019-01-01 A | 2019-01-01 A | 43 | 100% |  | 2019-01-01 | 2019-01-01 |  |  |  |  |  |  |  |  |  |
| 45 | 1.5 | **Infrastructure construction** |  | 1094d | 2018-12-27 A | 2023-03-07 |  | 99% | 1.7d | 2019-01-02 | 2023-03-07 | 1090d | 1386d |  |  | 21064h | 21016h | 6,211,561,692.5 | 6,246,570,000 | 6,186,337,914.63 |
| 46 | 1.5.1 | **Terminals** |  | 1081d | 2018-12-27 A | 2023-02-16 |  | 99% | 0d | 2019-01-02 | 2023-03-07 | 1090d | 1399d |  | Contingency Reserve [0.1%] | 13400h | 13400h | 3,044,021,692.5 | 3,080,390,000 | 3,032,921,692.5 |
| 47 | 1.5.1.1 | Dig area |  | 240d | 2018-12-27 A | 2019-11-27 A | 44 | 100% |  | 2019-01-02 | 2019-12-03 | 240d |  |  | Labourers A; Equipments/Machines [0.1%] | 1920h | 1920h | 576,000,000 | 576,000,000 | 576,000,000 |
| 48 | 1.5.1.2 | Lay foundation for terminal building |  | 148d | 2019-12-04 A | 2020-06-26 A | 47 | 100% |  | 2019-12-04 | 2020-06-30 | 150d |  |  | Labourers A; Concrete; Equipments/Machines [0.1%] | 1184h | 1184h | 357,200,000 | 362,000,000 | 356,200,000 |
| 49 | 1.5.1.3 | Construct the building |  | 600d | 2020-07-03 A | 2022-10-20 | 48 | 99% | 0d | 2020-07-01 | 2022-10-18 | 600d | 1484d | finish no earlier than 2022-10-20 | Labourers A; Project team A; Asphalt; Concrete; Equipments/Machines [0.1%] | 9600h | 9600h | 1,499,500,000 | 1,499,500,000 | 1,489,500,000 |
| 50 | 1.5.1.4 | Install utilities |  | 87d | 2022-10-19 A | 2023-02-16 A | 49 | 100% |  | 2022-10-19 | 2023-03-07 | 100d |  |  | Labourers A; Concrete; Equipments/Machines [0.1%] | 696h | 696h | 209,900,000 | 241,100,000 | 209,800,000 |

Notes:
- 30: The ENVISION certificate would be obtained only once verification is complete. The team in-charge of verification would take upto 10 days to make a decision.
- 47: The airport consists of three terminals. One terminal takes an approximate of 80 days based on the civil engineering team's professional judgement. Therefore, three terminals would take 240 days.

| ID | WBS | Task | Type | Duration | Start | Finish | Predecessors | Complete | Remaining | Baseline start | Baseline finish | Baseline duration | Total slack | Constraint | Deadline | Resources | Work | Actual work | Cost | Baseline cost | Actual cost |
| --- | --- | --- | --- | --- | --- | --- | --- | --- | --- | --- | --- | --- | --- | --- | --- | --- | --- | --- | --- | --- | --- |
| 51 | 1.5.2 | **Runways** |  | 1090d | 2019-01-02 A | 2023-03-07 |  | 99% | 3.82d | 2019-01-02 | 2023-03-07 | 1090d | 1386d |  |  | Contingency Reserve [0.1%] | 7664h | 7616h | 3,167,540,000 | 3,166,180,000 | 3,153,416,222.13 |
| 52 | 1.5.2.1 | Clear and excavate the land |  | 300d | 2019-01-02 A | 2020-02-25 A | 44 | 100% |  | 2019-01-02 | 2020-02-25 | 300d |  |  |  | Labourers B; Equipments/Machines [0.1%] | 2400h | 2400h | 961,000,000 | 961,000,000 | 960,000,000 |
| 53 | 1.5.2.2 | Mount the area |  | 197d | 2020-02-26 A | 2020-12-01 A | 52 | 100% |  | 2020-02-26 | 2020-12-01 | 200d |  |  |  | Labourers B; Equipments/Machines [0.1%] | 1576h | 1576h | 631,400,000 | 641,000,000 | 630,400,000 |
| 54 | 1.5.2.3 | Level the surface |  | 180d | 2020-12-02 A | 2021-08-10 A | 53 | 100% |  | 2020-12-02 | 2021-08-10 | 180d |  |  |  | Labourers B; Asphalt; Equipments/Machines [0.1%] | 1440h | 1440h | 576,600,000 | 576,600,000 | 576,500,000 |
| 55 | 1.5.2.4 | Add aggregate base |  | 103d | 2021-08-11 A | 2021-12-31 | 54 | 97% | 3d | 2021-08-11 | 2021-12-28 | 100d | 1693d | finish no earlier than 2021-12-31 |  | Labourers B; Project Team B; Concrete [200%]; Equipments/Machines [0.1%] | 1648h | 1600h | 344,060,000 | 333,100,000 | 333,000,000 |
| 56 | 1.5.2.5 | Pour a layer of asphalt |  | 75d | 2022-11-23 A | 2023-03-07 A | 55, 50FF | 100% |  | 2022-11-23 | 2023-03-07 | 75d |  |  |  | Labourers B; Asphalt; Concrete | 600h | 600h | 241,500,000 | 241,500,000 | 241,500,000 |
| 57 | 1.6 | **Integration of transport networks** |  | 760d | 2023-03-08 A | 2026-02-03 |  | 5% | 722d | 2023-03-08 | 2026-02-03 | 760d | 0d |  |  |  | 10720h | 304h | 3,070,161,900 | 3,070,161,900 | 157,409,466.25 |
| 58 | 1.6.1 | **Railway integration** |  | 480d | 2023-03-08 A | 2025-01-07 |  | 8% | 442d | 2023-03-08 | 2025-01-07 | 480d | 0d |  |  | Contingency Reserve [0.1%] | 4800h | 304h | 1,995,864,100 | 1,995,864,100 | 157,409,466.25 |
| 59 | 1.6.1.1 | Build railway tracks |  | 320d | 2023-03-08 A | 2024-05-28 | 56 | 12% | 282d | 2023-03-08 | 2024-05-28 | 320d | 0d |  |  | Labourers C; Equipments/Machines [0.1%] | 2560h | 304h | 1,152,010,000 | 1,152,010,000 | 136,800,000 |
| 60 | 1.6.1.2 | Construct an airport stop |  | 100d | 2024-05-29 | 2024-10-15 | 59 |  |  | 2024-05-29 | 2024-10-15 | 100d | 0d |  | 2024-12-06 | Labourers C; Concrete; Equipments/Machines [0.1%] | 800h |  | 361,100,000 | 361,100,000 |  |
| 61 | 1.6.1.3 | Connect various incoming or outgoing trains via this stop |  | 60d | 2024-10-16 | 2025-01-07 | 60 |  |  | 2024-10-16 | 2025-01-07 | 60d | 0d |  |  | Labourers C; Project Manager; Project team A; Equipments/Machines [0.1%] | 1440h |  | 222,424,000 | 222,424,000 |  |
| 62 | 1.6.2 | **Vehicle integration** |  | 280d | 2025-01-08 | 2026-02-03 |  |  |  | 2025-01-08 | 2026-02-03 | 280d | 0d |  |  | Contingency Reserve [0.1%] | 5920h |  | 1,074,297,800 | 1,074,297,800 |  |
| 63 | 1.6.2.1 | Construct garage buildings |  | 180d | 2025-01-08 | 2025-09-16 | 61 |  |  | 2025-01-08 | 2025-09-16 | 180d | 0d |  |  | Labourers B; Project Manager; Project Team B; Asphalt; Concrete; Equipments/Machines [0.1%] | 4320h |  | 601,072,000 | 601,072,000 |  |
| 64 | 1.6.2.2 | Construct different parking spot for 2 wheelers/4 wheelers |  | 100d | 2025-09-17 | 2026-02-03 | 63 |  |  | 2025-09-17 | 2026-02-03 | 100d | 0d |  |  | Labourers B; Project Team B; Equipments/Machines [0.1%]; Concrete | 1600h |  | 333,100,000 | 333,100,000 |  |
| 65 | 1.6.2.3 | Airport City Construction Complete | milestone | 0d | 2026-02-03 | 2026-02-03 | 64 |  |  | 2026-02-03 | 2026-02-03 |  | 0d |  |  |  |  |  |  |  |  |
| 66 | 1.7 | **Final Inspection** |  | 394d | 2026-02-04 | 2027-08-09 |  |  |  | 2026-02-04 | 2027-08-09 | 394d | 0d |  |  |  | 8432h |  | 89,927,700 | 89,927,700 |  |
| 67 | 1.7.1 | **Simulation** |  | 184d | 2026-02-04 | 2026-10-19 |  |  |  | 2026-02-04 | 2026-10-19 | 184d | 0d |  |  | Contingency Reserve [0.1%] | 4592h |  | 63,652,500 | 63,652,500 |  |
| 68 | 1.7.1.1 | Simulate the entire airport environment in an artificially created software |  | 100d | 2026-02-04 | 2026-06-23 | 65 |  |  | 2026-02-04 | 2026-06-23 | 100d | 0d |  |  | Simulators; Software [0.1%]; Project team A; Project Team B | 2400h |  | 28,100,000 | 28,100,000 |  |
| 69 | 1.7.1.2 | Add specific project constraints |  | 25d | 2026-06-24 | 2026-07-28 | 68 |  |  | 2026-06-24 | 2026-07-28 | 25d | 0d |  |  | Project Manager; Project team A; Project Team B; Simulators; Software [0.1%] | 800h |  | 7,310,000 | 7,310,000 |  |
| 70 | 1.7.1.3 | Simulate for unexpected weather/environment conditions |  | 30d | 2026-07-29 | 2026-09-08 | 69 |  |  | 2026-07-29 | 2026-09-08 | 30d | 0d |  |  | Project team A; Project Team B; Simulators; Software [0.1%]; Staff B | 960h |  | 13,250,000 | 13,250,000 |  |
| 71 | 1.7.1.4 | Experiment for desired results |  | 25d | 2026-09-09 | 2026-10-13 | 70 |  |  | 2026-09-09 | 2026-10-13 | 25d | 0d |  |  | Simulators; Software [0.1%]; Staff B | 400h |  | 6,050,000 | 6,050,000 |  |
| 72 | 1.7.1.5 | Record the results |  | 4d | 2026-10-14 | 2026-10-19 | 71 |  |  | 2026-10-14 | 2026-10-19 | 4d | 0d |  |  | Staff B | 32h |  | 640,000 | 640,000 |  |
| 73 | 1.7.2 | **Test-run** |  | 210d | 2026-10-20 | 2027-08-09 |  |  |  | 2026-10-20 | 2027-08-09 | 210d | 0d |  |  | Contingency Reserve [0.1%] | 3840h |  | 26,275,200 | 26,275,200 |  |
| 74 | 1.7.2.1 | Scrutinize minute details to identify faults |  | 30d | 2026-10-20 | 2026-11-30 | 72 |  |  | 2026-10-20 | 2026-11-30 | 30d | 0d |  |  | Project Manager; Project team A | 480h |  | 2,712,000 | 2,712,000 |  |
| 75 | 1.7.2.2 | Check runways for take-off and landing |  | 90d | 2026-12-01 | 2027-04-05 | 74 |  |  | 2026-12-01 | 2027-04-05 | 90d | 0d |  |  | Pilot; Project Manager; Project Team B | 2160h |  | 12,456,000 | 12,456,000 |  |
| 76 | 1.7.2.3 | Conduct trial-runs of aeroplanes on runways |  | 60d | 2027-04-06 | 2027-06-28 | 75 |  |  | 2027-04-06 | 2027-06-28 | 60d | 0d |  |  | Pilot; Project team A | 960h |  | 5,280,000 | 5,280,000 |  |
| 77 | 1.7.2.4 | Obtain approval from FAA |  | 30d | 2027-06-29 | 2027-08-09 | 76 |  |  | 2027-06-29 | 2027-08-09 | 30d | 0d | finish no later than 2027-10-02 |  | Project team A | 240h |  | 2,400,000 | 2,400,000 |  |

Notes:
- 68: Simulating airport environment is a very tedious process. It requires very detailed description to show accurate results. This would take atleast 100 days based on expert judgement of the software team.
- 77: It is important to obtain the FAA approval by October 2,2027 as the first flight is scheduled to be launched the following day. Our organization has made a promise to the public and it is very important to be fulfilled as Turkey's economy and our reputation depends on it.

| ID | WBS | Task | Type | Duration | Start | Finish | Predecessors | Baseline start | Baseline finish | Baseline duration | Total slack | Resources | Work | Cost | Baseline cost |
| --- | --- | --- | --- | --- | --- | --- | --- | --- | --- | --- | --- | --- | --- | --- | --- |
| 78 | 1.8 | **Post-Project phase** |  | 175d | 2027-08-10 | 2028-04-10 |  | 2027-08-10 | 2028-04-10 | 175d | 0d |  | 2520h | 38,488,200 | 38,488,200 |
| 79 | 1.8.1 | **Knowledge base expansion** |  | 95d | 2027-08-10 | 2027-12-20 |  | 2027-08-10 | 2027-12-20 | 95d | 0d | Contingency Reserve [0.1%] | 1640h | 23,409,400 | 23,409,400 |
| 80 | 1.8.1.1 | Identify risks |  | 60d | 2027-08-10 | 2027-11-01 | 77 | 2027-08-10 | 2027-11-01 | 60d | 0d | Project team A; Project Team B | 960h | 12,000,000 | 12,000,000 |
| 81 | 1.8.1.2 | Conduct a brainstorm session dedicated to contingency plan |  | 15d | 2027-11-02 | 2027-11-22 | 80 | 2027-11-02 | 2027-11-22 | 15d | 0d | Project Manager; Project team A; Project Team B | 360h | 3,156,000 | 3,156,000 |
| 82 | 1.8.1.3 | Shortlist and develop suitable contigency plans |  | 10d | 2027-11-23 | 2027-12-06 | 81 | 2027-11-23 | 2027-12-06 | 10d | 0d | Project team A; Project Team B | 160h | 2,000,000 | 2,000,000 |
| 83 | 1.8.1.4 | Record the results in knowledge base |  | 10d | 2027-12-07 | 2027-12-20 | 82 | 2027-12-07 | 2027-12-20 | 10d | 0d | Staff A; Staff B | 160h | 3,200,000 | 3,200,000 |
| 84 | 1.8.1.5 | Test- Run Complete | milestone | 0d | 2027-12-20 | 2027-12-20 | 83 | 2027-12-20 | 2027-12-20 |  | 0d |  |  |  |  |
| 85 | 1.8.2 | **Passenger feedback** |  | 80d | 2027-12-21 | 2028-04-10 |  | 2027-12-21 | 2028-04-10 | 80d | 0d | Contingency Reserve [0.1%] | 880h | 15,078,800 | 15,078,800 |
| 86 | 1.8.2.1 | Create services to gauge passengers' experience |  | 30d | 2027-12-21 | 2028-01-31 | 84 | 2027-12-21 | 2028-01-31 | 30d | 0d | Staff A | 240h | 4,800,000 | 4,800,000 |
| 87 | 1.8.2.2 | Identify possible weak areas |  | 20d | 2028-02-01 | 2028-02-28 | 86 | 2028-02-01 | 2028-02-28 | 20d | 0d | Staff A | 160h | 3,200,000 | 3,200,000 |
| 88 | 1.8.2.3 | Take corrective measure |  | 30d | 2028-02-29 | 2028-04-10 | 87 | 2028-02-29 | 2028-04-10 | 30d | 0d | Project Manager; Staff A | 480h | 5,112,000 | 5,112,000 |
| 89 | 1.9 | **Project Closing** |  | 49d | 2028-04-11 | 2028-06-16 |  | 2028-04-11 | 2028-06-16 | 49d | 0d |  | 440h | 9,087,760 | 9,087,760 |
| 90 | 1.9.1 | **Closure Report** |  | 49d | 2028-04-11 | 2028-06-16 |  | 2028-04-11 | 2028-06-16 | 49d | 0d | Contingency Reserve [0.1%] | 440h | 9,087,760 | 9,087,760 |
| 91 | 1.9.1.1 | Analyze project success/failure |  | 35d | 2028-04-11 | 2028-05-29 | 88 | 2028-04-11 | 2028-05-29 | 35d | 0d | Staff B | 280h | 5,600,000 | 5,600,000 |
| 92 | 1.9.1.2 | Archive project information |  | 8d | 2028-05-30 | 2028-06-08 | 91 | 2028-05-30 | 2028-06-08 | 8d | 0d | Staff B | 64h | 1,280,000 | 1,280,000 |
| 93 | 1.9.1.3 | Submit the report to sponsor |  | 6d | 2028-06-09 | 2028-06-16 | 92 | 2028-06-09 | 2028-06-16 | 6d | 0d | Project Manager; Staff B | 96h | 1,022,400 | 1,022,400 |
| 94 | 1.10 | **Celebration** |  | 8d | 2028-06-19 | 2028-06-28 |  | 2028-06-19 | 2028-06-28 | 8d | 0d |  | 200h | 13,879,120 | 13,879,120 |
| 95 | 1.10.1 | **Party** |  | 8d | 2028-06-19 | 2028-06-28 |  | 2028-06-19 | 2028-06-28 | 8d | 0d | Contingency Reserve [0.1%] | 200h | 13,879,120 | 13,879,120 |
| 96 | 1.10.1.1 | Invite stakeholders |  | 6d | 2028-06-19 | 2028-06-26 | 93 | 2028-06-19 | 2028-06-26 | 6d | 0d | Staff A; Staff B | 96h | 1,920,000 | 1,920,000 |
| 97 | 1.10.1.2 | Organize a lunch/dinner |  | 1d | 2028-06-27 | 2028-06-27 | 96 | 2028-06-27 | 2028-06-27 | 1d | 0d | Account Team B; HR B; Labourers A; Labourers B; Labourers C; Pilot; Project Manager; Project team A; Project Team B; Simulators; Staff A; Staff B | 96h | 10,138,400 | 10,138,400 |
| 98 | 1.10.1.3 | Appreciate all members for their involvement |  | 1d | 2028-06-28 | 2028-06-28 | 97 | 2028-06-28 | 2028-06-28 | 1d | 0d | Project Manager | 8h | 10,400 | 10,400 |
